# CityNexus Software Engineering 2026 - Classroom Gantt (a view of the same 65-row plan)

Schedule from MS Project, 2026-09-07 to 2026-10-23, status date 2026-10-22, costs in $, A marks actual dates.
TUTE - Software Engineering module 2026
This is an English-display twin of Classroom/Teacher_03_Project_Overview_R4.mpp, which is itself a view copy of Microsoft_Project/CityNexus_Software_Engineering_Plan.mpp: 65 tasks, every dependency record, every resource assignment, work and cost are all in this file - nothing was deleted. The classroom view only renames the 11 summary rows (back to the plan's own English names; the Chinese names are kept in each row's notes), renames the 5 course milestones, and collapses the outline to level 1. Expand (Outline -> Show Subtasks) to see every detail task and predecessor. The green arrows on milestone rows are the Deadline field (contract/check dates), which is not the same thing as a plan date.

## Calendars

- 标准: Mon-Fri 08:00-12:00, 13:00-17:00; Sat-Sun off.

## Resources

| Resource | Rate | Notes |
| --- | --- | --- |
| Yang Jianbin 0802240329 - requirements / architecture / integration | 20 | MEMBER 1 OF 3, named to this build on 2026-10-22. Identity in git: Canshu-King / yjianbin419@gmail.com, 1006 of 1095 commits on the reviewed branch, and the signature line of CityNexus_进度汇报_2026-10-13.md. STANDARD RATE IS A COURSEWORK PLANNING RATE FOR AN UNEVALUATED STUDENT TEAM, NOT A PAYROLL FIGURE; the hours behind it are the schedule's own. |
| Wang Jiarui 0802240322 - data integration / backend scopes / testing | 20 | MEMBER 2 OF 3, named to this build on 2026-10-22. NOT SEPARATELY EVIDENCED IN GIT: the reviewed branch carries one commit identity, because the automation lanes committed through it. The responsibility split is the plan's proposal for the report and is marked to be confirmed. RATE IS A PLANNING RATE, NOT A WAGE. |
| Wang Xinyue 0802240324 - frontend / agent surface / SRS writing | 20 | MEMBER 3 OF 3, named to this build on 2026-10-22. See the note on member 2 about git evidence. RATE IS A PLANNING RATE, NOT A WAGE. |
| Qoder agent lanes - automated build and test compute | 6 | EVIDENCED in git by the qoder-ai-lane, Qoder and lane-* author identities. Entered as a MATERIAL resource on purpose: a compute lane does not work hours, so it must not accrue labour hours or an hourly wage. The rate is a placeholder for measured API cost, and Work stays at zero. |
| Codex co-development - compute | 6 | EVIDENCED in git by the Codex and Codex Local Integration author identities. Material resource for the same reason as the Qoder lanes: cost without labour hours. |

## Schedule

| ID | WBS | Task | Type | Duration | Start | Finish | Predecessors | Complete | Remaining | Total slack | Free slack | Resources | Work | Actual work | Cost | Actual cost |
| --- | --- | --- | --- | --- | --- | --- | --- | --- | --- | --- | --- | --- | --- | --- | --- | --- |
| 1 | 1 | **1 Coursework initiation and project selection** |  | 3d | 2026-09-07 A | 2026-09-09 A |  | 100% |  |  |  |  | 11h | 11h | 220 | 220 |
| 2 | 1.1 | 1.1 Read the assignment brief and fix the deliverable scope |  | 1d | 2026-09-07 A | 2026-09-07 A |  | 100% |  |  |  | Yang Jianbin 0802240329 - requirements / architecture / integration [37.5%] | 3h | 3h | 60 | 60 |
| 3 | 1.2 | 1.2 Select the project: smart city traveler system |  | 1d | 2026-09-08 A | 2026-09-08 A | 2 | 100% |  |  |  | Yang Jianbin 0802240329 - requirements / architecture / integration [25%] | 2h | 2h | 40 | 40 |
| 4 | 1.3 | 1.3 Confirm the group of three and each member's responsibility |  | 2d | 2026-09-08 A | 2026-09-09 A | 3SS | 100% |  |  |  | Wang Jiarui 0802240322 - data integration / backend scopes / testing [12.5%]; Wang Xinyue 0802240324 - frontend / agent surface / SRS writing [12.5%]; Yang Jianbin 0802240329 - requirements / architecture / integration [12.5%] | 6h | 6h | 120 | 120 |
| 5 | 1.4 | M1 选题与范围确认 | milestone | 0d | 2026-09-08 A | 2026-09-08 A | 3 | 100% |  |  |  |  |  |  |  |  |
| 6 | 2 | **2 Requirements engineering** |  | 31d | 2026-09-09 A | 2026-10-21 |  | 81% | 5.81d | 2d |  |  | 23h | 19h | 459.97 | 380 |
| 7 | 2.1 | 2.1 Research the software needed, library and online |  | 4d | 2026-09-09 A | 2026-09-14 A | 5 | 100% |  |  |  | Yang Jianbin 0802240329 - requirements / architecture / integration [12.5%] | 4h | 4h | 80 | 80 |
| 8 | 2.2 | 2.2 Write the requirement baseline: 8 goals, 61 functional, 24 rules, 16 NFR, 14 security, 15 integration |  | 5d | 2026-09-09 A | 2026-09-15 A | 7SS | 100% |  |  |  | Yang Jianbin 0802240329 - requirements / architecture / integration [22.5%] | 9h | 9h | 180 | 180 |
| 9 | 2.3 | 2.3 Domain model and use case specification |  | 4d | 2026-09-09 A | 2026-09-14 A | 8SS | 100% |  |  |  | Yang Jianbin 0802240329 - requirements / architecture / integration [18.8%] | 6h | 6h | 120 | 120 |
| 10 | 2.4 | M2 需求基线草稿 | milestone | 0d | 2026-09-15 A | 2026-09-15 A | 8, 9 | 100% |  |  |  |  |  |  |  |  |
| 11 | 2.5 | 2.4 Get the requirement baseline agreed with the teacher as customer |  | 3d | 2026-10-19 | 2026-10-21 | 60 |  |  | 2d |  | Yang Jianbin 0802240329 - requirements / architecture / integration [16.7%] | 4h |  | 79.97 |  |
| 12 | 3 | **3 System design and architecture** |  | 5d | 2026-09-16 A | 2026-09-22 A |  | 100% |  |  |  |  | 23h | 23h | 459.9 | 459.9 |
| 13 | 3.1 | 3.1 Layered architecture and agent runtime design |  | 5d | 2026-09-16 A | 2026-09-22 A | 10 | 100% |  |  |  | Yang Jianbin 0802240329 - requirements / architecture / integration [15%] | 6h | 6h | 120 | 120 |
| 14 | 3.2 | 3.2 Interface contracts: OpenAPI and tool catalogues |  | 4d | 2026-09-16 A | 2026-09-21 A | 13SS | 100% |  |  |  | Wang Jiarui 0802240322 - data integration / backend scopes / testing [9.4%]; Yang Jianbin 0802240329 - requirements / architecture / integration [12.5%] | 7h | 7h | 139.97 | 139.97 |
| 15 | 3.3 | 3.3 Microsoft Visio system model for the report |  | 4d | 2026-09-16 A | 2026-09-21 A | 14SS | 100% |  |  |  | Wang Jiarui 0802240322 - data integration / backend scopes / testing [21.9%]; Wang Xinyue 0802240324 - frontend / agent surface / SRS writing [9.4%] | 10h | 10h | 199.94 | 199.94 |
| 16 | 3.4 | M3 架构设计完成 | milestone | 0d | 2026-09-22 A | 2026-09-22 A | 13, 14, 15 | 100% |  |  |  |  |  |  |  |  |
| 17 | 4 | **4 Backend platform and data layer** |  | 28d | 2026-09-16 A | 2026-10-23 |  | 83% | 4.7d | 0d |  |  | 21.98h | 18.99h | 439.65 | 379.71 |
| 18 | 4.1 | 4.1 FastAPI service and the /api/v1 surface |  | 10d | 2026-09-16 A | 2026-09-29 A | 13SS | 100% |  |  |  | Yang Jianbin 0802240329 - requirements / architecture / integration [3.8%] | 3h | 3h | 60 | 60 |
| 19 | 4.2 | 4.2 SQLAlchemy schema, 60 tables, idempotency and audit |  | 8d | 2026-09-16 A | 2026-09-25 A | 18SS | 100% |  |  |  | Wang Jiarui 0802240322 - data integration / backend scopes / testing [3.1%]; Yang Jianbin 0802240329 - requirements / architecture / integration [3.1%] | 3.99h | 3.99h | 79.87 | 79.87 |
| 20 | 4.3 | 4.3 Journey lifecycle, plan generation and replanning |  | 12d | 2026-09-16 A | 2026-10-01 A | 18SS | 100% |  |  |  | Yang Jianbin 0802240329 - requirements / architecture / integration [4.2%] | 3.99h | 3.99h | 79.87 | 79.87 |
| 21 | 4.4 | 4.4 Twin, capability and preference scopes |  | 6d | 2026-09-28 A | 2026-10-05 A | 19 | 100% |  |  |  | Wang Jiarui 0802240322 - data integration / backend scopes / testing [12.5%] | 6h | 6h | 120 | 120 |
| 22 | 4.5 | 4.5 Commerce, guardian and autopilot |  | 14d | 2026-10-06 A | 2026-10-23 | 21 | 40% | 8.4d | 0d |  | Wang Jiarui 0802240322 - data integration / backend scopes / testing [4.5%] | 5h | 2h | 99.9 | 39.96 |
| 23 | 4.6 | M4 后端主干跑通 | milestone | 0d | 2026-10-05 A | 2026-10-05 A | 20, 21 | 100% |  |  |  |  |  |  |  |  |
| 24 | 5 | **5 Map and place data integration** |  | 9d | 2026-09-16 A | 2026-09-28 |  | 69% | 2.76d | 19d |  |  | 15h | 10.1h | 299.97 | 201.97 |
| 25 | 5.1 | 5.1 Geocoding and POI: Photon, Nominatim, Overpass |  | 5d | 2026-09-16 A | 2026-09-22 A | 18SS | 100% |  |  |  | Wang Jiarui 0802240322 - data integration / backend scopes / testing [12.5%] | 5h | 5h | 100 | 100 |
| 26 | 5.2 | 5.2 Context providers: Open-Meteo weather and time |  | 3d | 2026-09-16 A | 2026-09-18 | 25SS | 70% | 0.9d | 25d | 0d | Wang Jiarui 0802240322 - data integration / backend scopes / testing [12.5%] | 3h | 2.1h | 60 | 42 |
| 27 | 5.3 | 5.3 Mobility: Valhalla routing behind a live URL |  | 4d | 2026-09-16 | 2026-09-21 | 26SS |  |  | 24d |  | Wang Jiarui 0802240322 - data integration / backend scopes / testing [12.5%] | 4h |  | 80 |  |
| 28 | 5.4 | 5.4 Deterministic mock provider set as the shipped default |  | 4d | 2026-09-23 A | 2026-09-28 A | 25 | 100% |  |  |  | Wang Jiarui 0802240322 - data integration / backend scopes / testing [9.4%] | 3h | 3h | 59.97 | 59.97 |
| 29 | 5.5 | M5 供应商接齐 | milestone | 0d | 2026-09-28 A | 2026-09-28 A | 26, 28 | 100% |  |  |  |  |  |  |  |  |

Notes:
- 1: Classroom display name (EN): 1 Coursework initiation and project selection / Chinese classroom name: 选题、立项与分工 / WBS 1. Dates/percent/work/cost are this copy's own computed values from the same 65-row plan; nothing was rescheduled.
- 2: EVIDENCE: Brief PDF read in full on 2026-10-22; both weights, both dates and the ten-slide limit are quoted from it. / OBSERVED (this reading) 2026-10-22 - Software Engineering - Assignment Coursework 2026.pdf read in full: Part 1 50% (10 slides, no later than midnight Friday 2026-10-02), Part 2 50% (project plan + full SRS, no later than midnight Friday 2026-11-06)
- 3: EVIDENCE: Brief item 11 'A smart city traveler system'; use-cases.yaml metadata officialProject = Smart City Traveler System; the repository opens the same night with the domain model and requirements baseline. / OBSERVED (commit) 2026-09-05 - 096d857a4f 2026-09-05T01:07:10+0800 chore(domain): freeze CityNexus domain model v0.4.1 RC2 - first commit on any ref
- 4: EVIDENCE: MEMBERSHIP IS EVIDENCED BY THE OWNER'S STATEMENT, NOT BY THE REPOSITORY: every commit on the reviewed branch is under one identity (Canshu-King / yjianbin419), because the automation lanes committed through the owner's account. The split below is the plan's proposal for the report, not a measured history. / OBSERVED (stated by the project owner) 2026-10-22 - Yang Jianbin 0802240329, Wang Jiarui 0802240322, Wang Xinyue 0802240324 - named to this build on 2026-10-22
- 5: 课堂展示名：M1 选题与范围确认 / 计划原名：M1 Topic and scope agreed / WBS 1.4；计划日 2026-09-08。
- 6: Classroom display name (EN): 2 Requirements engineering / Chinese classroom name: 需求工程与基线 / WBS 2. Dates/percent/work/cost are this copy's own computed values from the same 65-row plan; nothing was rescheduled.
- 7: EVIDENCE: requirements.yaml sources field cites ARCH/LIB/WEB across 138 entries; the coursework reading pack sits in '02 Software Engineering/'.
- 8: EVIDENCE: requirements/requirements.yaml v0.3.0 counted on 2026-10-22: 8 + 61 + 24 + 16 + 14 + 15 = 138 entries, each with acceptance criteria and traceability. First committed 2026-09-05; the coursework gap analysis carrying the 2026-09-12 date is a document date, not a commit date. / OBSERVED (commit) 2026-09-05 - 072e84f0bd 2026-09-05T02:02:39+0800 feat(requirements): establish CityNexus requirements baseline v0.3
- 9: EVIDENCE: domain-model/citynexus-core-domain-model-v0.4.2.yaml; use-cases/use-cases.yaml v0.1.0: 13 top-level use cases, 14 detail use cases, 9 actors, 17 relationships. / OBSERVED (commit) 2026-09-05 - d5236d9022 domain model v0.4.2 RC3 2026-09-05T02:02:32+0800
- 10: 课堂展示名：M2 需求基线草稿 / 计划原名：M2 Requirements baseline drafted / WBS 2.4；计划日 2026-09-15。
- 11: EVIDENCE: NOT DONE AS OF THE STATUS DATE and re-planned into the remaining window: every requirement and use case still carries status baseline-candidate / proposed, and requirements/README.md states the teacher-customer has not approved the baseline. Left at 0% rather than back-dated. / DATES AND SCOPE ARE PROVISIONAL - to be confirmed with the teacher as customer.
- 12: Classroom display name (EN): 3 System design and architecture / Chinese classroom name: 系统设计与架构 / WBS 3. Dates/percent/work/cost are this copy's own computed values from the same 65-row plan; nothing was rescheduled.
- 13: EVIDENCE: AGENT_RUNTIME_ARCHITECTURE.md (V3) and contracts/AGENT_RUNTIME_ARCHITECTURE.md; the file keeps being revised through the whole build, so this row is the first design round, not a one-off document. / OBSERVED (document) 2026-09-15 - CURRENT_STATUS.md dated 2026-09-15 closes the V19.2.1 design round; AGENT_RUNTIME_ARCHITECTURE.md first appears in git on 2026-09-19 and is still changing on 2026-10-20
- 14: EVIDENCE: contracts/openapi.yaml; AGENT_TOOL_CATALOG.md; backend/app/agent/tool_catalog.py:26-59. / OBSERVED (commit) 2026-09-19 - contracts/ first commit 2026-09-19, last 2026-10-21
- 15: EVIDENCE: visio/CityNexus_Visio_Model_Baseline_v1.0.4_RC5.vsdx in git (first commit 2026-09-19) plus the four drawings and their proof run by this build on 2026-10-22: 148 connectors glued, 579 shape-data values read back. / OBSERVED (this build) 2026-10-22 - the four .vsdx in deliverables/SoftwareEngineering_2026/Visio, generated and proved on 2026-10-22
- 16: 课堂展示名：M3 架构设计完成 / 计划原名：M3 Architecture design complete / WBS 3.4；计划日 2026-09-22。
- 17: Classroom display name (EN): 4 Backend platform and data layer / Chinese classroom name: 后端平台与数据层 / WBS 4. Dates/percent/work/cost are this copy's own computed values from the same 65-row plan; nothing was rescheduled.
- 18: EVIDENCE: backend/app/main.py: 175 @app decorators counted 2026-10-22, 14,569 lines. / OBSERVED (commit) 2026-09-19 - backend/app/main.py 2026-09-19 .. 2026-10-22, 526 commits
- 19: EVIDENCE: backend/app/db/models.py: 60 __tablename__ declarations; idempotency_keys models.py:677; audit_logs models.py:562. / OBSERVED (commit) 2026-09-19 - backend/app/db/models.py 2026-09-19 .. 2026-10-20, 116 commits
- 20: EVIDENCE: main.py:3136, 7369, 7790, 10923, 13097, 13569; backend/app/replanning; tests under backend/tests. / OBSERVED (commit) 2026-09-19 - backend/app/replanning 2026-09-19 .. 2026-10-22, 42 commits
- 21: EVIDENCE: main.py:9846, 2761, 2568; models.py:95, 121; ORD-0355 keeps stay budget declared rather than invented (models.py:824).
- 22: EVIDENCE: PARTIAL: endpoints exist (main.py:14404, 1599, 1772) but payment is mock-payment only and the impact resolver defaults to disabled (config.py:33); BUG_REPORT_20260913 still lists four P0 items.
- 23: 课堂展示名：M4 后端主干跑通 / 计划原名：M4 Core backend running end to end / WBS 4.6；计划日 2026-10-05。
- 24: Classroom display name (EN): 5 Map and place data integration / Chinese classroom name: 地图与地点数据接入 / WBS 5. Dates/percent/work/cost are this copy's own computed values from the same 65-row plan; nothing was rescheduled.
- 25: EVIDENCE: integrations/discovery/photon.py:20-27; discovery/real_city.py:617, 684-688 with three Overpass mirrors.
- 26: EVIDENCE: integrations/context/open_meteo.py:29-36 wired; the provider is off unless opted in, so it is not counted as proven.
- 27: EVIDENCE: NOT WORKING: BLOCKERS.md:13-14 records live Valhalla as skipped because no URL is configured; the travel matrix stays mocked. Kept at 0% and inside the window it was planned for, so the lateness stays visible. / DATES AND SCOPE ARE PROVISIONAL - to be confirmed with the teacher as customer.
- 28: EVIDENCE: .env.example:18-31 and integrations/mock/providers.py:13; config.py:79-81 keeps real-city mode at replay.
- 29: 课堂展示名：M5 供应商接齐 / 计划原名：M5 Provider mesh integrated behind one interface / WBS 5.5；计划日 2026-09-28。

| ID | WBS | Task | Type | Duration | Start | Finish | Predecessors | Complete | Remaining | Total slack | Free slack | Deadline | Resources | Work | Actual work | Cost | Actual cost |
| --- | --- | --- | --- | --- | --- | --- | --- | --- | --- | --- | --- | --- | --- | --- | --- | --- | --- |
| 30 | 6 | **6 AI agent and Hermes capability** |  | 16d | 2026-09-16 A | 2026-10-07 |  | 82% | 2.95d | 12d |  |  |  | 21.99h | 20.4h | 451.87 | 415.12 |
| 31 | 6.1 | 6.1 Intent classification and trusted context assembly |  | 5d | 2026-09-16 A | 2026-09-22 A | 20SS | 100% |  |  |  |  | Wang Xinyue 0802240324 - frontend / agent surface / SRS writing [12.5%] | 5h | 5h | 100 | 100 |
| 32 | 6.2 | 6.2 Mission compile, mission plan and the twelve-step tool loop |  | 6d | 2026-09-23 A | 2026-09-30 A | 31 | 100% |  |  |  |  | Wang Xinyue 0802240324 - frontend / agent surface / SRS writing [10.4%]; Qoder agent lanes - automated build and test compute | 5h | 5h | 105.94 | 105.94 |
| 33 | 6.3 | 6.3 Tool gateway: allowlist, audit, idempotency, authorization |  | 5d | 2026-09-23 A | 2026-09-29 A | 32SS | 100% |  |  |  |  | Wang Xinyue 0802240324 - frontend / agent surface / SRS writing [15%] | 6h | 6h | 120 | 120 |
| 34 | 6.4 | 6.4 Eleven tools and the MCP V1 / V2 surfaces |  | 4d | 2026-09-30 A | 2026-10-05 A | 33 | 100% |  |  |  |  | Wang Xinyue 0802240324 - frontend / agent surface / SRS writing [12.5%] | 4h | 4h | 80 | 80 |
| 35 | 6.5 | 6.5 Native Hermes runtime |  | 6d | 2026-09-30 A | 2026-10-07 | 34SS | 20% | 4.8d | 12d |  |  | Wang Xinyue 0802240324 - frontend / agent surface / SRS writing [4.2%]; Codex co-development - compute | 2h | 0.4h | 45.94 | 9.19 |
| 36 | 6.6 | M6 Agent 实测通过 | milestone | 0d | 2026-10-05 A | 2026-10-05 A | 34 | 100% |  |  |  |  |  |  |  |  |  |
| 37 | 7 | **7 Frontend UI and interaction** |  | 12d | 2026-09-16 A | 2026-10-01 A |  | 100% |  |  |  |  |  | 16h | 16h | 325.9 | 325.9 |
| 38 | 7.1 | 7.1 V8Experience shell and the fifteen routed panels |  | 8d | 2026-09-16 A | 2026-09-25 A | 18SS | 100% |  |  |  |  | Wang Xinyue 0802240324 - frontend / agent surface / SRS writing [7.8%] | 5h | 5h | 99.97 | 99.97 |
| 39 | 7.2 | 7.2 MapLibre map, plan comparison and Trip Studio |  | 6d | 2026-09-16 A | 2026-09-23 A | 38SS | 100% |  |  |  |  | Wang Xinyue 0802240324 - frontend / agent surface / SRS writing [10.4%] | 5h | 5h | 99.94 | 99.94 |
| 40 | 7.3 | 7.3 Copilot dock, agent rail, check-ins and collections |  | 6d | 2026-09-24 A | 2026-10-01 A | 39 | 100% |  |  |  |  | Wang Xinyue 0802240324 - frontend / agent surface / SRS writing [12.5%]; Qoder agent lanes - automated build and test compute | 6h | 6h | 126 | 126 |
| 41 | 7.4 | M7 前端接通后端 | milestone | 0d | 2026-10-01 A | 2026-10-01 A | 40 | 100% |  |  |  |  |  |  |  |  |  |
| 42 | 8 | **8 Integration and consolidation** |  | 6d | 2026-09-16 A | 2026-09-23 |  | 75% | 1.5d | 22d |  |  |  | 9h | 7.5h | 186 | 153 |
| 43 | 8.1 | 8.1 Authoritative integration line and landing gate |  | 6d | 2026-09-16 A | 2026-09-23 A | 39SS | 100% |  |  |  |  | Yang Jianbin 0802240329 - requirements / architecture / integration [12.5%] | 6h | 6h | 120 | 120 |
| 44 | 8.2 | 8.2 Backport the frontend onto the current capability contract |  | 6d | 2026-09-16 A | 2026-09-23 | 43SS | 50% | 3d | 22d |  |  | Wang Xinyue 0802240324 - frontend / agent surface / SRS writing [6.2%]; Codex co-development - compute | 3h | 1.5h | 66 | 33 |
| 45 | 8.3 | M8 集成线稳定 | milestone | 0d | 2026-09-23 A | 2026-09-23 A | 43 | 100% |  |  |  |  |  |  |  |  |  |
| 46 | 9 | **9 Verification and defect management** |  | 20d | 2026-09-24 A | 2026-10-21 |  | 58% | 8.33d | 2d |  |  |  | 33.98h | 13.14h | 697.65 | 271.47 |
| 47 | 9.1 | 9.1 Backend regression suite |  | 20d | 2026-09-24 A | 2026-10-21 | 45SS | 85% | 3d | 2d | 0d |  | Wang Jiarui 0802240322 - data integration / backend scopes / testing [4.4%]; Qoder agent lanes - automated build and test compute | 6.99h | 5.94h | 145.84 | 123.96 |
| 48 | 9.2 | 9.2 Frontend end-to-end suite |  | 20d | 2026-09-24 A | 2026-10-21 | 47SS | 60% | 8d | 2d | 0d |  | Wang Jiarui 0802240322 - data integration / backend scopes / testing [1.9%]; Wang Xinyue 0802240324 - frontend / agent surface / SRS writing [2.5%]; Qoder agent lanes - automated build and test compute | 6.99h | 4.2h | 145.84 | 87.5 |
| 49 | 9.3 | 9.3 Close the four P0 defects from the bug report |  | 5d | 2026-09-24 A | 2026-09-30 | 48SS | 50% | 2.5d | 13d | 0d |  | Wang Jiarui 0802240322 - data integration / backend scopes / testing [15%] | 6h | 3h | 120 | 60 |
| 50 | 9.4 | 9.4 Physical phone and PWA shadow trial |  | 4d | 2026-10-01 | 2026-10-06 | 49 |  |  | 13d | 0d |  | Wang Xinyue 0802240324 - frontend / agent surface / SRS writing [15.6%] | 5h |  | 99.97 |  |
| 51 | 9.5 | 9.5 Verification evidence pack and defect triage report |  | 3d | 2026-10-19 | 2026-10-21 | 47FF, 48FF |  |  | 2d |  |  | Wang Jiarui 0802240322 - data integration / backend scopes / testing [12.5%]; Yang Jianbin 0802240329 - requirements / architecture / integration [12.5%] | 6h |  | 120 |  |
| 52 | 9.6 | 9.6 Final regression re-run and defect count for the report |  | 2d | 2026-10-01 | 2026-10-02 | 50SS |  |  | 15d | 2d |  | Wang Jiarui 0802240322 - data integration / backend scopes / testing [18.8%]; Qoder agent lanes - automated build and test compute | 3h |  | 66 |  |
| 53 | 9.7 | M9 System test ready (plan 10-06, deadline 11-02) | milestone | 0d | 2026-10-06 | 2026-10-06 | 50, 52 |  |  | 13d |  | 2026-11-02 |  |  |  |  |  |

Notes:
- 30: Classroom display name (EN): 6 AI agent and Hermes capability / Chinese classroom name: AI Agent 与 Hermes 能力 / WBS 6. Dates/percent/work/cost are this copy's own computed values from the same 65-row plan; nothing was rescheduled.
- 31: EVIDENCE: main.py:14190-14228 (8 intents) and main.py:13593 _copilot_context().
- 32: EVIDENCE: agent/mission.py:231, 384; mission_plan.py:74; runtime.py:62, 336 run(max_steps=12).
- 33: EVIDENCE: agent/gateway.py:357-398, 59, 71, 338-347; approval boundary main.py:2081. The order the code actually runs is what diagram 03 now draws: allowlist test at :358, 404 raise at :359, record_audit at :377. / OBSERVED (commit) 2026-09-19 - backend/app/agent/gateway.py 2026-09-19 .. 2026-10-20, 103 commits
- 34: EVIDENCE: tool_catalog.py:26-59; agent-mcp/citynexus_mcp/server.py:128 (V1 six) and :378 (V2 eleven); agent-mcp/tests.
- 35: EVIDENCE: PARTIAL AND UNPROVEN: integrations/hermes/native_client.py:34, 71, 132, 158 exist and the protocol surface is complete, but BLOCKERS.md:9-12 states the Hermes binary is not installed here and runtime identity is still DIRECT.
- 36: 课堂展示名：M6 Agent 实测通过 / 计划原名：M6 Agent surface proven against a live model / WBS 6.6；计划日 2026-10-05。
- 37: Classroom display name (EN): 7 Frontend UI and interaction / Chinese classroom name: 前端界面与交互 / WBS 7. Dates/percent/work/cost are this copy's own computed values from the same 65-row plan; nothing was rescheduled.
- 38: EVIDENCE: frontend/src/app/V8Experience.tsx; routes/v8Routes.ts:1-33. / OBSERVED (commit) 2026-09-19 - frontend/src/app/V8Experience.tsx 2026-09-19 .. 2026-10-22, 342 commits
- 39: EVIDENCE: components/JourneyMap.tsx; features/planning/PlanComparison.tsx; main.py:10525 route evidence.
- 40: EVIDENCE: features/agent/CopilotDock.tsx, AgentRunRail.tsx; features/checkin/checkins.ts:14; features/collections/collections.ts:16.
- 41: 课堂展示名：M7 前端接通后端 / 计划原名：M7 Frontend running against the real backend / WBS 7.4；计划日 2026-10-01。
- 42: Classroom display name (EN): 8 Integration and consolidation / Chinese classroom name: 集成、联调与归并 / WBS 8. Dates/percent/work/cost are this copy's own computed values from the same 65-row plan; nothing was rescheduled.
- 43: EVIDENCE: _qoder_integration_20260919 line and the four-leg landing loop of 2026-10-08; 90 commits landed on the authoritative line on 2026-10-13. / OBSERVED (commit) 2026-10-08 - the four-leg landing loop first full run 2026-10-08; 40 pending branches cleared that day
- 44: EVIDENCE: PARTIAL: ORD-0245 measured the payload growing from 16 to 26 keys; 11 of 25 frontend fixes cherry-pick cleanly, 12 sit in files that have diverged.
- 45: 课堂展示名：M8 集成线稳定 / 计划原名：M8 Integration line stable / WBS 8.3；计划日 2026-09-23。
- 46: Classroom display name (EN): 9 Verification and defect management / Chinese classroom name: 验证与缺陷管理 / WBS 9. Dates/percent/work/cost are this copy's own computed values from the same 65-row plan; nothing was rescheduled.
- 47: EVIDENCE: 242 backend test modules counted 2026-10-22. The 2026-10-13 report measured 1887 passed / 45 failed on the tip: not green, so not 100%.
- 48: EVIDENCE: 184 e2e specs counted 2026-10-22; the authoritative-mode gate needs a per-run database and a fresh journey seed, which is recorded as a known limit.
- 49: EVIDENCE: BUG_REPORT_20260913.md:4 lists P0 x4 and P1 x3; Bug-001 (MockMobilityProvider on by default) and Bug-002 (ICS all-day timezone) are still named there.
- 50: EVIDENCE: NOT PERFORMED: CURRENT_STATUS.md:4 says SHADOW_TRIAL_CODE_READY_PENDING_PHYSICAL_DEVICE and TEST_RESULTS.md:10 records it as not performed. / DATES AND SCOPE ARE PROVISIONAL - to be confirmed with the teacher as customer.
- 51: EVIDENCE: PARTIAL AND OPEN: this build writes Evidence/AUTOMATION_VERIFICATION.md plus the proof-run result files, but the triage report for the four P0 items in BUG_REPORT_20260913.md is not assembled, so the row stays at 0%. It is joined Finish-to-Finish to both suites because the pack is complete when they are, not three days after them.
- 52: EVIDENCE: NOT RUN: the Part 2 report has to quote one final pass/fail count taken after the shadow trial, and no such run exists yet; the last measured figure is 1887 passed / 45 failed on the 2026-10-13 tip. It starts with the shadow trial rather than after it, because the same machine session covers both. / DATES AND SCOPE ARE PROVISIONAL - to be confirmed with the teacher as customer.
- 53: Classroom display name (EN): M9 System test ready (plan 10-06, deadline 11-02) / Chinese classroom name: M9 系统测试就绪 / WBS 9.7; plan date 2026-10-06, contract/check deadline 2026-11-02. A plan date is not a happened date.

| ID | WBS | Task | Type | Duration | Start | Finish | Predecessors | Complete | Remaining | Total slack | Free slack | Deadline | Resources | Work | Actual work | Cost | Actual cost |
| --- | --- | --- | --- | --- | --- | --- | --- | --- | --- | --- | --- | --- | --- | --- | --- | --- | --- |
| 54 | 10 | **10 Coursework deliverables and reporting** |  | 23d | 2026-09-23 A | 2026-10-23 |  | 52% | 11.13d | 0d |  |  |  | 38.99h | 18.29h | 779.78 | 365.84 |
| 55 | 10.1 | 10.1 Part 1: ten-slide report with the Visio model and task allocation |  | 5d | 2026-09-23 | 2026-09-29 | 16 |  |  | 2d | 0d | 2026-10-02 | Wang Jiarui 0802240322 - data integration / backend scopes / testing [7.5%]; Wang Xinyue 0802240324 - frontend / agent surface / SRS writing [5%]; Yang Jianbin 0802240329 - requirements / architecture / integration [10%] | 9h |  | 180 |  |
| 56 | 10.2 | 10.2 Mid-term review pack: architecture, journey, agent loop, use cases |  | 11d | 2026-10-02 A | 2026-10-16 | 41 | 70% | 3.3d | 2d | 0d |  | Wang Jiarui 0802240322 - data integration / backend scopes / testing [4.5%]; Wang Xinyue 0802240324 - frontend / agent surface / SRS writing [4.5%]; Yang Jianbin 0802240329 - requirements / architecture / integration [5.7%] | 12.99h | 9.09h | 259.78 | 181.84 |
| 57 | 10.3 | 10.3 Part 2: project plan with WBS, links, resources and costs |  | 4d | 2026-10-19 A | 2026-10-22 | 56 | 80% | 0.8d | 1d | 0d |  | Yang Jianbin 0802240329 - requirements / architecture / integration [18.8%] | 6h | 4.8h | 120 | 96 |
| 58 | 10.4 | 10.4 Part 2: detailed requirement specification write-up |  | 5d | 2026-10-19 A | 2026-10-23 | 57SS | 40% | 3d | 0d |  |  | Wang Jiarui 0802240322 - data integration / backend scopes / testing [15%]; Wang Xinyue 0802240324 - frontend / agent surface / SRS writing [12.5%] | 11h | 4.4h | 220 | 88 |
| 59 | 10.5 | M10 Part 1 contract deadline 10-02 (submission record pending platform confirmation) | milestone | 0d | 2026-09-29 | 2026-09-29 | 55 |  |  | 2d |  | 2026-10-02 |  |  |  |  |  |
| 60 | 10.6 | M11 10-23 teacher-student meeting (held? unconfirmed) | milestone | 0d | 2026-10-16 | 2026-10-16 | 56 |  |  | 2d | 0d | 2026-10-23 |  |  |  |  |  |
| 61 | 10.7 | M12 Part 2 contract deadline 11-06 | milestone | 0d | 2026-10-23 | 2026-10-23 | 58 |  |  | 0d |  | 2026-11-06 |  |  |  |  |  |
| 62 | 11 | **11 Final acceptance, documentation and delivery** |  | 5d | 2026-10-19 A | 2026-10-23 |  | 75% | 1.25d | 0d |  |  |  | 7h | 6h | 140 | 120 |
| 63 | 11.1 | 11.1 Evidence pack: source mapping and automation verification |  | 1d | 2026-10-19 A | 2026-10-19 A | 56 | 100% |  |  |  |  | Wang Xinyue 0802240324 - frontend / agent surface / SRS writing [25%]; Yang Jianbin 0802240329 - requirements / architecture / integration [37.5%] | 5h | 5h | 100 | 100 |
| 64 | 11.2 | 11.2 Publish the deliverables to the repository |  | 1d | 2026-10-20 A | 2026-10-20 | 63 | 50% | 0.5d | 3d |  |  | Yang Jianbin 0802240329 - requirements / architecture / integration [25%] | 2h | 1h | 40 | 20 |
| 65 | 11.3 | M13 Course delivery complete (plan 10-23) | milestone | 0d | 2026-10-23 | 2026-10-23 | 64, 61 |  |  | 0d |  | 2026-11-06 |  |  |  |  |  |

Notes:
- 54: Classroom display name (EN): 10 Coursework deliverables and reporting / Chinese classroom name: 课程交付物与汇报 / WBS 10. Dates/percent/work/cost are this copy's own computed values from the same 65-row plan; nothing was rescheduled.
- 55: EVIDENCE: SUBMISSION STATE IS NOT VERIFIABLE FROM THIS REPOSITORY. The brief set the date at midnight Friday 2026-10-02 and no .pptx for it is in the tree this side of that date, which does not prove it was never uploaded to the course platform - it proves only that the repository cannot show it. To be confirmed against the Moodle/course record, then the percentage set. Recorded at 0% rather than back-dated. / DEADLINE 2026-10-02 - Project displays this and does not obey it; the date is derived from the links. / DEADLINE BREACH IS A RECORDED FACT: this date was missed.
- 56: EVIDENCE: The four Visio drawings and this plan were produced on 2026-10-22 and each passed its own proof run; the slides themselves are still to be assembled.
- 57: EVIDENCE: this .mpp, its exported views and the Evidence/ folder, 2026-10-22.
- 58: EVIDENCE: 138 requirements and 27 use cases exist as YAML with acceptance criteria; the prose document for submission is not assembled.
- 59: Classroom display name (EN): M10 Part 1 contract deadline 10-02 (submission record pending platform confirmation) / Chinese classroom name: M10 10-02 待确认 / WBS 10.5; plan date 2026-09-29, contract/check deadline 2026-10-02. A plan date is not a happened date.
- 60: Classroom display name (EN): M11 10-23 teacher-student meeting (held? unconfirmed) / Chinese classroom name: M11 10-23 待确认 / WBS 10.6; plan date 2026-10-16, contract/check deadline 2026-10-23. A plan date is not a happened date.
- 61: Classroom display name (EN): M12 Part 2 contract deadline 11-06 / Chinese classroom name: M12 11-06 截止 / WBS 10.7; plan date 2026-10-23, contract/check deadline 2026-11-06. A plan date is not a happened date.
- 62: Classroom display name (EN): 11 Final acceptance, documentation and delivery / Chinese classroom name: 最终验收、文档与交付 / WBS 11. Dates/percent/work/cost are this copy's own computed values from the same 65-row plan; nothing was rescheduled.
- 63: EVIDENCE: deliverables/SoftwareEngineering_2026/Evidence/ written by this build, with the proof-run result files beside it.
- 64: EVIDENCE: Commit and push are attempted by this build and the result is read back from git, not assumed: the published SHA and the branch are recorded in AUTOMATION_VERIFICATION.md.
- 65: Classroom display name (EN): M13 Course delivery complete (plan 10-23) / Chinese classroom name: M13 10-23 交付 / WBS 11.3; plan date 2026-10-23, contract/check deadline 2026-11-06. A plan date is not a happened date.
